# 西山居计费系统项目计划

Schedule from MS Project, 2002-07-31 to 2002-11-01, A marks actual dates.
Microsoft

## Calendars

- Standard: Mon-Fri 08:00-12:00, 13:00-17:00; Sat-Sun off.

## Resources

| Resource |
| --- |
| 欧文 |
| 杨晓东 |
| 刘万松 |
| ow |

## Schedule

| ID | WBS | Task | Duration | Start | Finish | Predecessors | Complete | Remaining | Total slack | Free slack | Constraint | Resources | Work | Actual work |
| --- | --- | --- | --- | --- | --- | --- | --- | --- | --- | --- | --- | --- | --- | --- |
| 1 | 1 | **西山居网络游戏计费系统** | 68d? | 2002-07-31 A | 2002-11-01 |  | 9% | 61.82d? | 0d |  |  |  | 224h | 96h |
| 2 | 1.1 | **项目前期需求准备** | 5d | 2002-07-31 A | 2002-08-06 A |  | 100% |  |  |  |  |  | 40h | 40h |
| 3 | 1.1.1 | 基本需求了解 | 1d | 2002-07-31 A | 2002-07-31 A |  | 100% |  |  |  | finish no earlier than 2002-07-31 | 欧文 | 8h | 8h |
| 4 | 1.1.2 | 数据库结构设计 | 2d | 2002-08-01 A | 2002-08-02 A |  | 100% |  |  |  | start no earlier than 2002-08-01 | 欧文 | 16h | 16h |
| 5 | 1.1.3 | 详细需求校对及文档 | 2d | 2002-08-05 A | 2002-08-06 A |  | 100% |  |  |  | start no earlier than 2002-08-05 | 欧文 | 16h | 16h |
| 6 | 1.2 | 技术准备 | 5d | 2002-07-31 A | 2002-08-06 A |  | 100% |  |  |  | finish no earlier than 2002-08-06 | 杨晓东 | 40h | 40h |
| 7 | 1.3 | **程序实现（Coding）** | 63d? | 2002-08-07 A | 2002-11-01 |  | 5% | 60.15d? | 0d |  |  |  | 144h | 16h |
| 8 | 1.3.1 | 数据库物理设计及部署 | 2d | 2002-08-07 A | 2002-08-08 A |  | 100% |  |  |  | start no earlier than 2002-08-07 | 欧文 | 16h | 16h |
| 9 | 1.3.2 | Use case及时序图 | 3d? | 2002-08-12 | 2002-08-14 |  |  |  | 8d |  | finish no earlier than 2002-08-14 | 欧文 | 24h |  |
| 10 | 1.3.3 | 系统各个模块类图 | 3d? | 2002-08-14 | 2002-08-16 |  |  |  | 6d |  | start no earlier than 2002-08-14 | 欧文; 杨晓东 | 48h |  |
| 11 | 1.3.4 | **数据库访问对象封装** | 5d | 2002-08-12 | 2002-08-16 |  |  |  | 55d |  |  |  | 56h |  |
| 12 | 1.3.4.1 | 数据库连接及配置文件 | 2d | 2002-08-12 | 2002-08-13 |  |  |  | 57d | 0d | start no earlier than 2002-08-12 | 杨晓东 | 16h |  |
| 13 | 1.3.4.2 | 数据连接池初步设计及实现 | 2d | 2002-08-13 | 2002-08-14 |  |  |  | 57d |  | start no earlier than 2002-08-13 | 杨晓东 | 16h |  |
| 14 | 1.3.4.3 | Socket池初步设计 | 1d | 2002-08-14 | 2002-08-14 | 12 |  |  | 57d |  |  | 杨晓东 | 8h |  |
| 15 | 1.3.4.4 | 数据访问服务器设计及实现 | 2d | 2002-08-15 | 2002-08-16 |  |  |  | 55d |  | finish no earlier than 2002-08-16 | 杨晓东 | 16h |  |
| 17 | 1.3.5 | review：里程碑一 | 1d? | 2002-08-16 | 2002-08-16 |  |  |  | 6d |  | start no earlier than 2002-08-16 |  |  |  |
| 19 | 1.3.6 | **各模块基本数据库操作程序实现** | 15d? | 2002-08-19 A | 2002-09-06 |  | 14% | 12.94d? | 40d |  |  |  |  |  |
| 20 | 1.3.6.1 | **点卡系统基本操作及数据接口** | 7d? | 2002-08-19 A | 2002-08-27 |  | 30% | 4.9d? | 48d |  |  |  |  |  |
| 21 | 1.3.6.1.1 | 点卡信息表基本操作 | 1d? | 2002-08-19 A | 2002-08-19 A |  | 100% |  |  |  | start no earlier than 2002-08-19 |  |  |  |
| 22 | 1.3.6.1.2 | 点卡数据历史表基本操作 | 1d? | 2002-08-20 A | 2002-08-20 A | 21 | 100% |  |  |  |  |  |  |  |
| 23 | 1.3.6.1.3 | 点卡号维护表 | 1d? | 2002-08-21 A | 2002-08-21 A | 22 | 100% |  |  |  |  |  |  |  |
| 24 | 1.3.6.1.4 | 表间关系及数据合法性检验 | 2d? | 2002-08-22 | 2002-08-23 | 23 |  |  | 50d |  |  |  |  |  |
| 25 | 1.3.6.1.5 | **点卡对象类封装、实现业务接口** | 3d? | 2002-08-23 | 2002-08-27 |  |  |  | 48d |  |  |  |  |  |
| 26 | 1.3.6.1.5.1 | 点卡生成接口 | 1d? | 2002-08-23 | 2002-08-23 |  |  |  | 50d |  | start no earlier than 2002-08-23 |  |  |  |
| 27 | 1.3.6.1.5.2 | 卡号维护 | 1d? | 2002-08-23 | 2002-08-23 |  |  |  | 49d | 0d | start no earlier than 2002-08-23 |  |  |  |
| 28 | 1.3.6.1.5.3 | 点卡数据查询 | 1d? | 2002-08-26 | 2002-08-26 | 27 |  |  | 49d |  |  |  |  |  |
| 29 | 1.3.6.1.5.4 | 点卡注销、删除 | 1d? | 2002-08-26 | 2002-08-26 |  |  |  | 48d | 0d | start no earlier than 2002-08-26 |  |  |  |
| 30 | 1.3.6.1.5.5 | 点卡合法性验证 | 1d? | 2002-08-27 | 2002-08-27 | 29 |  |  | 48d |  |  |  |  |  |

Notes:
- 2: 该阶段由欧文出差到珠海完成
- 6: 本阶段由杨晓东在北京完成， / 主要完成一下工作： / 1.MySQL安装调试 / 2.熟悉MySQL＋＋接口 / 3.研究Windows移植Linux可行性，主要选取CygWin为研究对象
- 19: 数据表基本操作功能： / 添加－－－add/ 修改－－－update/ 删除－－－delete/ 检索－－－select/ 取得列表－－－－getList

| ID | WBS | Task | Duration | Start | Finish | Predecessors | Complete | Remaining | Total slack | Free slack | Constraint |
| --- | --- | --- | --- | --- | --- | --- | --- | --- | --- | --- | --- |
| 31 | 1.3.6.2 | **账号系统基本操作及数据接口** | 10d? | 2002-08-19 A | 2002-08-30 |  | 27% | 7.33d? | 45d |  |  |
| 32 | 1.3.6.2.1 | 账号信息表基本操作 | 1d? | 2002-08-19 A | 2002-08-19 A |  | 100% |  |  |  | start no earlier than 2002-08-19 |
| 33 | 1.3.6.2.2 | 用户状态表基本操作 | 1d? | 2002-08-19 A | 2002-08-19 A |  | 100% |  |  |  | start no earlier than 2002-08-19 |
| 34 | 1.3.6.2.3 | 用户点卡使用历史记录表基本操作 | 1d? | 2002-08-20 A | 2002-08-20 A | 33 | 100% |  |  |  |  |
| 35 | 1.3.6.2.4 | 服务器列表基本操作 | 1d? | 2002-08-20 A | 2002-08-20 A | 32 | 100% |  |  |  |  |
| 36 | 1.3.6.2.5 | 表间关系及数据合法性检验 | 3d? | 2002-08-21 | 2002-08-23 | 35 |  |  | 50d |  |  |
| 37 | 1.3.6.2.6 | **账号对象类封装、实现业务接口** | 5d? | 2002-08-26 | 2002-08-30 |  |  |  | 45d |  |  |
| 38 | 1.3.6.2.6.1 | 新建账号 | 1d? | 2002-08-26 | 2002-08-26 |  |  |  | 47d | 0d | start no earlier than 2002-08-26 |
| 39 | 1.3.6.2.6.2 | 删除账号 | 1d? | 2002-08-26 | 2002-08-26 |  |  |  | 45d | 0d | start no earlier than 2002-08-26 |
| 40 | 1.3.6.2.6.3 | 锁定账号（登录） | 1d? | 2002-08-27 | 2002-08-27 | 39 |  |  | 45d | 0d |  |
| 41 | 1.3.6.2.6.4 | 解锁账号（注销） | 1d? | 2002-08-27 | 2002-08-27 | 38 |  |  | 47d | 0d |  |
| 42 | 1.3.6.2.6.5 | 封闭账号 | 1d? | 2002-08-28 | 2002-08-28 | 41 |  |  | 47d |  |  |
| 43 | 1.3.6.2.6.6 | 账号解除封闭 | 1d? | 2002-08-28 | 2002-08-28 | 40 |  |  | 45d | 0d |  |
| 44 | 1.3.6.2.6.7 | 账号验证 | 2d? | 2002-08-29 | 2002-08-30 | 43 |  |  | 45d |  |  |
| 45 | 1.3.6.3 | **角色系统基本数据操作及数据接口** | 15d? | 2002-08-19 | 2002-09-06 |  |  |  | 40d |  |  |
| 46 | 1.3.6.3.1 | 角色基本信息表基本操作 | 1d? | 2002-08-19 | 2002-08-19 |  |  |  | 53d | 0d | start no earlier than 2002-08-19 |
| 47 | 1.3.6.3.2 | 好友列表基本操作 | 1d? | 2002-08-20 | 2002-08-20 | 46 |  |  | 53d |  |  |
| 48 | 1.3.6.3.3 | 任务列表基本操作 | 1d? | 2002-08-20 | 2002-08-20 |  |  |  | 53d |  | start no earlier than 2002-08-20 |
| 49 | 1.3.6.3.4 | 战斗技能列表基本操作 | 1d? | 2002-08-20 | 2002-08-20 |  |  |  | 53d |  | start no earlier than 2002-08-20 |
| 50 | 1.3.6.3.5 | 生活技能列表基本操作 | 1d? | 2002-08-20 | 2002-08-20 |  |  |  | 52d | 0d | start no earlier than 2002-08-20 |
| 51 | 1.3.6.3.6 | 玩家拥有武器装备列表基本操作 | 1d? | 2002-08-21 | 2002-08-21 | 50 |  |  | 52d |  |  |
| 52 | 1.3.6.3.7 | 装备基础属性表基本操作 | 1d? | 2002-08-22 | 2002-08-22 |  |  |  | 51d |  | start no earlier than 2002-08-22 |
| 53 | 1.3.6.3.8 | 装备需求属性表基本操作 | 1d? | 2002-08-22 | 2002-08-22 |  |  |  | 51d |  | start no earlier than 2002-08-22 |
| 54 | 1.3.6.3.9 | 装备效能属性表基本操作 | 1d? | 2002-08-22 | 2002-08-22 |  |  |  | 51d |  | start no earlier than 2002-08-22 |
| 55 | 1.3.6.3.10 | 表间关系及数据合法性检验 | 3d? | 2002-08-23 | 2002-08-27 |  |  |  | 48d |  | finish no earlier than 2002-08-27 |

| ID | WBS | Task | Duration | Start | Finish | Predecessors | Total slack | Free slack | Constraint |
| --- | --- | --- | --- | --- | --- | --- | --- | --- | --- |
| 56 | 1.3.6.3.11 | **角色对象类、武器对象类封装实现业务接口** | 8d? | 2002-08-28 | 2002-09-06 |  | 40d |  |  |
| 57 | 1.3.6.3.11.1 | 取得角色列表 | 1d? | 2002-08-28 | 2002-08-28 |  | 47d |  | start no earlier than 2002-08-28 |
| 58 | 1.3.6.3.11.2 | 角色添加 | 1d? | 2002-08-28 | 2002-08-28 |  | 47d |  | start no earlier than 2002-08-28 |
| 59 | 1.3.6.3.11.3 | 角色修改 | 1d? | 2002-08-28 | 2002-08-28 |  | 45d | 0d | start no earlier than 2002-08-28 |
| 60 | 1.3.6.3.11.4 | 角色删除 | 1d? | 2002-08-29 | 2002-08-29 | 59 | 45d | 0d |  |
| 61 | 1.3.6.3.11.5 | 角色部分基本属性修改 | 1d? | 2002-08-28 | 2002-08-28 |  | 47d |  | start no earlier than 2002-08-28 |
| 62 | 1.3.6.3.11.6 | 角色好友列表更新 | 1d? | 2002-08-30 | 2002-08-30 | 60 | 45d |  |  |
| 63 | 1.3.6.3.11.7 | 角色任务列表更新 | 1d? | 2002-08-30 | 2002-08-30 |  | 45d |  | start no earlier than 2002-08-30 |
| 64 | 1.3.6.3.11.8 | 角色战斗技能列表更新 | 1d? | 2002-08-30 | 2002-08-30 |  | 45d |  | start no earlier than 2002-08-30 |
| 65 | 1.3.6.3.11.9 | 角色生活技能列表更新 | 1d? | 2002-08-30 | 2002-08-30 |  | 40d | 0d | start no earlier than 2002-08-30 |
| 66 | 1.3.6.3.11.10 | 角色武器装备更新 | 4d? | 2002-09-02 | 2002-09-05 | 65 | 40d | 0d | finish no earlier than 2002-09-04 |
| 67 | 1.3.6.3.11.11 | 角色数据关系检验 | 1d? | 2002-09-06 | 2002-09-06 | 66 | 40d |  |  |
| 68 | 1.3.7 | **各模块业务逻辑接口** | 10d? | 2002-09-09 | 2002-09-20 |  | 30d |  |  |
| 69 | 1.3.7.1 | **点卡系统** | 10d? | 2002-09-09 | 2002-09-20 |  | 30d |  |  |
| 70 | 1.3.7.1.1 | 点卡生成 | 10d? | 2002-09-09 | 2002-09-20 |  | 30d |  | start no earlier than 2002-09-09 |
| 71 | 1.3.7.1.2 | 点卡退货 | 10d? | 2002-09-09 | 2002-09-20 |  | 30d |  | start no earlier than 2002-09-09 |
| 72 | 1.3.7.1.3 | 点卡充值 | 10d? | 2002-09-09 | 2002-09-20 |  | 30d |  | start no earlier than 2002-09-09 |
| 73 | 1.3.7.2 | **账号系统** | 10d? | 2002-09-09 | 2002-09-20 |  | 30d |  |  |
| 74 | 1.3.7.2.1 | 账号登录 | 10d? | 2002-09-09 | 2002-09-20 |  | 30d |  | start no earlier than 2002-09-09 |
| 75 | 1.3.7.2.2 | 退出游戏 | 10d? | 2002-09-09 | 2002-09-20 |  | 30d |  | start no earlier than 2002-09-09 |
| 76 | 1.3.7.2.3 | 账号充值 | 10d? | 2002-09-09 | 2002-09-20 |  | 30d |  | start no earlier than 2002-09-09 |
| 77 | 1.3.7.2.4 | 提供GM操作账号所需的接口 | 10d? | 2002-09-09 | 2002-09-20 |  | 30d |  | start no earlier than 2002-09-09 |
| 78 | 1.3.7.2.5 | 账号计费 | 10d? | 2002-09-09 | 2002-09-20 |  | 30d |  | start no earlier than 2002-09-09 |
| 79 | 1.3.7.3 | **角色系统** | 10d? | 2002-09-09 | 2002-09-20 |  | 30d |  |  |
| 80 | 1.3.7.3.1 | 角色数据存储 | 10d? | 2002-09-09 | 2002-09-20 |  | 30d |  | start no earlier than 2002-09-09 |
| 81 | 1.3.7.3.2 | 取得角色详细信息 | 10d? | 2002-09-09 | 2002-09-20 |  | 30d |  | start no earlier than 2002-09-09 |
| 82 | 1.3.7.3.3 | 取得角色各项信息 | 10d? | 2002-09-09 | 2002-09-20 |  | 30d |  | start no earlier than 2002-09-09 |
| 83 | 1.3.7.3.4 | 提供GM操作角色所需的接口 | 10d? | 2002-09-09 | 2002-09-20 |  | 30d |  | start no earlier than 2002-09-09 |
| 85 | 1.3.8 | review：里程碑二 | 2d? | 2002-09-19 | 2002-09-20 |  | 30d |  | start no earlier than 2002-09-19 |
| 87 | 1.3.9 | 与西山居连调测试 | 9d? | 2002-09-24 | 2002-10-04 |  | 20d |  | start no earlier than 2002-09-24 |
| 89 | 1.3.10 | review：剑侠情缘游戏成功！！！ | 1d? | 2002-11-01 | 2002-11-01 |  | 0d |  | start no earlier than 2002-11-01 |

Notes:
- 68: 该部分会涉及到各个部分操作所以时间统一在一起协调
