# alpha3

Schedule from MS Project, 2003-04-14 to 2003-05-19.
金山公司西山居事业部

## Calendars

- 标准: Mon-Fri 08:00-12:00, 13:00-17:00; Sat-Sun off.

## Resources

| Resource |
| --- |
| 胡翌 |
| 吴越 |
| 俞江 |
| 章鹏 |
| 窦昊 |
| 陈鹏 |
| 刘鹏 |

## Schedule

| ID | WBS | Task | Type | Duration | Start | Finish | Predecessors | Total slack | Free slack | Constraint | Resources | Work |
| --- | --- | --- | --- | --- | --- | --- | --- | --- | --- | --- | --- | --- |
| 1 | 1 | **Alpha3** |  | 25d | 2003-04-14 | 2003-05-16 |  | 2d |  |  |  | 768h |
| 2 | 1.1 | 客户端与服务器端相同的数值计算工作 |  | 2d | 2003-04-14 | 2003-04-15 |  | 2d | 0d |  | 胡翌 | 16h |
| 3 | 1.2 | 装备列表中添加马类装备 |  | 1d | 2003-04-16 | 2003-04-16 | 2 | 2d | 0d |  | 胡翌 | 8h |
| 4 | 1.3 | 多服务器的游戏世界方面的调整 |  | 2d | 2003-04-17 | 2003-04-18 | 3 | 2d | 0d |  | 胡翌 | 16h |
| 5 | 1.4 | Npc操作的提示信息 |  | 0.5d | 2003-04-21 | 2003-04-21 | 4 | 2d | 0d |  | 胡翌 | 4h |
| 6 | 1.5 | 药瓶快捷使用 |  | 0.5d | 2003-04-21 | 2003-04-21 | 5 | 2d | 0d |  | 胡翌 | 4h |
| 7 | 1.6 | 数值计算的修改 |  | 1d | 2003-04-22 | 2003-04-22 | 6 | 2d | 0d |  | 胡翌 | 8h |
| 8 | 1.7 | NPC模块中音效的使用 |  | 0.5d | 2003-04-23 | 2003-04-23 | 7 | 2d | 0d |  | 胡翌 | 4h |
| 9 | 1.8 | 传输协议的按位压缩 |  | 1d | 2003-04-23 | 2003-04-24 | 8 | 2d | 0d |  | 胡翌 | 8h |
| 10 | 1.9 | 传送门 |  | 0.5d | 2003-04-24 | 2003-04-24 | 9 | 2d | 0d |  | 胡翌 | 4h |
| 11 | 1.10 | 玩家跨服务器的处理 |  | 5d | 2003-04-25 | 2003-05-01 | 10 | 2d |  |  | 胡翌 | 40h |
| 12 | 1.11 | 系统消息界面 |  | 3d | 2003-04-14 | 2003-04-16 |  | 10d | 0d |  | 吴越 | 24h |
| 13 | 1.12 | QQ界面的调试 |  | 2d | 2003-04-17 | 2003-04-21 | 12 | 8d | 0d |  | 吴越 | 16h |
| 14 | 1.13 | 小地图界面 |  | 1d | 2003-04-22 | 2003-04-22 | 13 | 9d | 0d |  | 吴越 | 8h |
| 15 | 1.14 | 系统选项 |  | 1d | 2003-04-23 | 2003-04-23 | 14 | 9d | 0d |  | 吴越 | 8h |
| 16 | 1.15 | 储物箱 |  | 1d | 2003-04-24 | 2003-04-24 | 15 | 9d | 1d |  | 吴越 | 8h |
| 17 | 1.16 | SPR抽方向工具 |  | 1d | 2003-04-28 | 2003-04-28 | 16 | 8d | 0d |  | 吴越 | 8h |
| 18 | 1.17 | 界面需求变更引起的改动 |  | 5d | 2003-04-29 | 2003-05-06 | 17 | 9d | 0d |  | 吴越 | 40h |
| 19 | 1.18 | 界面及地图排序BUG的修改 | milestone | 0d | 2003-05-06 | 2003-05-06 | 18 | 9d |  |  | 吴越 |  |
| 20 | 1.19 | 游戏世界小地图 |  | 8d | 2003-04-21 | 2003-04-30 |  | 0d |  | start no earlier than 2003-04-21 | 俞江 | 64h |
| 21 | 1.20 | 自动更新自动去除只读属性 |  | 1d | 2003-05-01 | 2003-05-01 | 20 | 0d |  |  | 俞江 | 8h |
| 22 | 1.21 | 客户端流畅度初步补偿 |  | 3d | 2003-04-14 | 2003-04-16 |  | 3d | 0d |  | 章鹏 | 24h |
| 23 | 1.22 | QQ聊天模块与界面的整合 |  | 5d | 2003-04-17 | 2003-04-23 | 22 | 3d | 0d |  | 章鹏 | 40h |
| 24 | 1.23 | 组队、交易、物品方面的细节调整与调试 | milestone | 0d | 2003-04-23 | 2003-04-23 | 23 | 3d | 0d |  | 章鹏 |  |
| 25 | 1.24 | 客户端与服务器端相同的数值计算工作 |  | 1d | 2003-04-14 | 2003-04-14 |  | 16d | 0d |  | 窦昊 | 8h |
| 26 | 1.25 | 完成子弹、光环、主动、状态类技能 |  | 7d | 2003-04-15 | 2003-04-23 | 25 | 16d | 0d |  | 窦昊 | 56h |
| 27 | 1.26 | 连调帐号服务器 |  | 5d | 2003-04-24 | 2003-04-30 | 26 | 16d | 0d |  | 窦昊 | 40h |
| 28 | 1.27 | 技能方面的调试与修改 |  | 3d | 2003-05-01 | 2003-05-05 | 27 | 10d | 0d |  | 窦昊 | 24h |
| 29 | 1.28 | 角色数据库方面功能的调试 | milestone | 0d | 2003-05-05 | 2003-05-05 | 28 | 10d |  |  | 窦昊 |  |
| 30 | 1.29 | 3D模式的优化工作 |  | 10d | 2003-04-14 | 2003-04-25 |  | 4d | 0d |  | 陈鹏 | 80h |
| 31 | 1.30 | 多服务器角色服务 |  | 5d | 2003-04-14 | 2003-04-18 |  | 9d | 0d |  | 刘鹏 | 40h |
| 32 | 1.31 | 多服务器网关 |  | 10d | 2003-04-21 | 2003-05-02 | 31 | 9d | 0d |  | 刘鹏 | 80h |
| 33 | 1.32 | 角色跨服务器服务 |  | 5d | 2003-05-05 | 2003-05-09 | 32 | 4d | 0d |  | 刘鹏 | 40h |
| 34 | 1.33 | 多服务器连调 |  | 5d | 2003-05-12 | 2003-05-16 | 33 | 4d |  |  | 刘鹏 | 40h |

Notes:
- 19: 具体工作量分散到前面的时间中去了。 / 具体顺序： / 4.19：已提交的解决BUG列表、鼠标指向不同时换不同的图（需要美术支持）、马装备 / 4.26：交易面板粘鼠标、界面层次（需要策划提供相应层次关系） / 5.3：角色选择界面改为三个（需要美术配合）、选出生地界面、ESC键的错误、主界面打坐、跑步按钮、信息闪动。 / 5.10：左右键技能图标分列左右、按钮的ToolTip、装备放下前的阴影、连接中断后界面各流程的处理 / 5.17：开场动画、聊天符号 / 6.1：肖像拼接界面
- 24: 具体工作量分散到前面的时间中去了。 / 组队细节初步已经完成（缺系统消息） / 4.19 地面物品动画的随机播放（需要美术及策划支持）
- 29: 具体工作量分散到前面的时间中去了。

| ID | WBS | Task | Duration | Start | Finish | Predecessors | Total slack | Resources | Work |
| --- | --- | --- | --- | --- | --- | --- | --- | --- | --- |
| 35 | 2 | **CloseBelta** | 18d | 2003-04-24 | 2003-05-19 |  | 0d |  | 336h |
| 36 | 2.1 | gm系统 | 15d | 2003-04-24 | 2003-05-14 | 24 | 3d | 章鹏 | 120h |
| 37 | 2.2 | 自动更新打包文件的合并 | 5d | 2003-05-02 | 2003-05-08 | 21 | 0d | 俞江 | 40h |
| 38 | 2.3 | 冗余图素查找 | 7d | 2003-05-09 | 2003-05-19 | 37 | 0d | 俞江 | 56h |
| 39 | 2.4 | 光影计算 | 15d | 2003-04-28 | 2003-05-16 | 30 | 4d | 陈鹏 | 120h |
