# 剑三2003年工作进度表

Schedule from MS Project, 2003-02-17 to 2003-05-19, A marks actual dates.
金山公司西山居事业部

## Calendars

- 标准: Mon-Fri 08:00-12:00, 13:00-17:00; Sat-Sun off.

## Resources

| Resource |
| --- |
| 胡翌 |
| 吴越 |
| 窦昊 |
| 章鹏 |
| 俞江 |
| 陈鹏 |
| 刘鹏 |

## Schedule

| ID | WBS | Task | Duration | Start | Finish | Predecessors | Complete | Remaining | Baseline start | Baseline finish | Baseline duration | Total slack | Free slack | Resources | Work | Actual work |
| --- | --- | --- | --- | --- | --- | --- | --- | --- | --- | --- | --- | --- | --- | --- | --- | --- |
| 1 | 1 | **剑三程序** | 65.5d? | 2003-02-17 A | 2003-05-19 |  | 46% | 35.23d? | 2003-01-08 | 2003-03-31 | 69d? | 0d |  |  | 2876h | 1358.8h |
| 2 | 1.1 | **Alpha2** | 41d | 2003-02-17 A | 2003-04-14 |  | 70% | 12.27d | 2003-02-17 | 2003-04-14 | 41d | 24.5d |  |  | 1688h | 1182.8h |
| 3 | 1.1.1 | 游戏世界加载Trap点 | 0.5d | 2003-02-17 A | 2003-02-17 A |  | 100% |  | 2003-02-17 | 2003-02-17 | 0.5d |  |  | 胡翌 | 4h | 4h |
| 4 | 1.1.2 | 游戏世界已实现功能的调试修改完善 | 5d | 2003-02-17 A | 2003-02-24 | 3 | 60% | 2d | 2003-02-17 | 2003-02-24 | 5d | 45d | 15.5d | 胡翌 | 40h | 24h |
| 5 | 1.1.3 | 任务道具、药品 | 5d | 2003-02-24 A | 2003-03-03 A | 4 | 100% |  | 2003-02-24 | 2003-03-03 | 5d |  |  | 胡翌 | 40h | 40h |
| 6 | 1.1.4 | 网络模块数据处理、压缩、加密、与游戏世界的整合 | 10d | 2003-03-03 A | 2003-03-17 | 5 | 60% | 4d | 2003-03-03 | 2003-03-17 | 10d | 4d | 0d | 胡翌 | 80h | 48h |
| 7 | 1.1.5 | 装备数值系统调试及客户端界面数据显示变更 | 5d | 2003-03-17 A | 2003-03-24 | 6 | 80% | 1d | 2003-03-17 | 2003-03-24 | 5d | 0d |  | 胡翌 | 40h | 32h |
| 8 | 1.1.6 | 游戏世界中头顶对话界面 | 1d | 2003-03-24 | 2003-03-25 | 7 |  |  | 2003-03-24 | 2003-03-25 | 1d | 0d |  | 胡翌 | 8h |  |
| 9 | 1.1.7 | Alpha2版本前的游戏世界调试除错 | 5d | 2003-03-25 | 2003-04-01 | 8 |  |  | 2003-03-25 | 2003-04-01 | 5d | 0d |  | 胡翌 | 40h |  |
| 10 | 1.1.8 | 地图编辑器提供全局小地图 | 3d | 2003-02-17 A | 2003-02-19 A |  | 100% |  | 2003-02-17 | 2003-02-19 | 3d |  |  | 俞江 | 24h | 24h |
| 11 | 1.1.9 | 修改地图编辑器NPC存放方式及转档工具 | 10d | 2003-02-20 A | 2003-03-05 A | 10 | 100% |  | 2003-02-20 | 2003-03-05 | 10d |  |  | 俞江 | 80h | 80h |
| 12 | 1.1.10 | Trap、NPC、ClientOnly Npc的调试除错 | 3d | 2003-03-06 A | 2003-03-10 A | 11 | 100% |  | 2003-03-06 | 2003-03-10 | 3d |  |  | 俞江 | 24h | 24h |
| 13 | 1.1.11 | 大地图拆分小地图 | 2d | 2003-03-11 A | 2003-03-12 A | 12 | 100% |  | 2003-03-11 | 2003-03-12 | 2d |  |  | 俞江 | 16h | 16h |
| 14 | 1.1.12 | 地图编辑器提供动态光源 | 3d | 2003-03-13 A | 2003-03-18 A | 13 | 100% |  | 2003-03-13 | 2003-03-18 | 3d |  |  | 俞江 | 24h | 24h |
| 15 | 1.1.13 | 小地图截图 | 3d | 2003-03-19 A | 2003-03-24 A | 14 | 100% |  | 2003-03-19 | 2003-03-24 | 3d |  |  | 俞江 | 24h | 24h |
| 16 | 1.1.14 | 游戏世界的小地图 | 8d | 2003-03-25 A | 2003-04-07 | 15 | 25% | 6d | 2003-03-31 | 2003-04-07 | 5d | 18d | 0d | 俞江 | 64h | 16h |
| 17 | 1.1.15 | 编辑器显示地图格子障碍，编辑器内人物移动障碍判断使用格子 | 4d | 2003-04-08 A | 2003-04-14 | 16 | 50% | 2d | 2003-04-08 | 2003-04-14 | 4d | 15.5d | 0d | 俞江 | 32h | 16h |
| 18 | 1.1.16 | 人物状态显示 | 1d | 2003-02-17 A | 2003-02-17 A |  | 100% |  | 2003-02-17 | 2003-02-17 | 1d |  |  | 章鹏 | 8h | 8h |
| 19 | 1.1.17 | 交易系统 | 4d | 2003-02-18 A | 2003-02-21 A | 18 | 100% |  | 2003-02-18 | 2003-02-21 | 4d |  |  | 章鹏 | 32h | 32h |
| 20 | 1.1.18 | 掉出的装备、金钱与玩家的关系 | 0.5d | 2003-02-24 A | 2003-02-24 A | 19 | 100% |  | 2003-02-24 | 2003-02-24 | 0.5d |  |  | 章鹏 | 4h | 4h |
| 21 | 1.1.19 | 玩家离线时的聊天、组队、任务、交易数据处理 | 0.5d | 2003-02-25 A | 2003-02-25 A | 20 | 100% |  | 2003-02-25 | 2003-02-25 | 0.5d |  |  | 章鹏 | 4h | 4h |
| 22 | 1.1.20 | 组队调试 | 3d | 2003-02-26 A | 2003-02-28 A | 21 | 100% |  | 2003-04-03 | 2003-04-08 | 3d |  |  | 章鹏 | 24h | 24h |
| 23 | 1.1.21 | ClientOnlyNpc、ClientOnlyObj及Npc、Obj、Trap加载 | 10d | 2003-03-03 A | 2003-03-14 A | 22 | 100% |  | 2003-03-03 | 2003-03-14 | 10d |  |  | 章鹏 | 80h | 80h |
| 24 | 1.1.22 | ClientOnlyNpc、ClientOnlyObj的调试 | 2d | 2003-03-17 A | 2003-03-18 A | 23 | 100% |  | 2003-04-01 | 2003-04-03 | 2d |  |  | 章鹏 | 16h | 16h |
| 25 | 1.1.23 | 交易调试 | 5d | 2003-03-19 A | 2003-03-25 A | 24 | 100% |  | 2003-03-27 | 2003-03-28 | 1d |  |  | 章鹏 | 40h | 40h |
| 26 | 1.1.24 | 聊天模块与界面的整合 | 3d | 2003-03-20 A | 2003-03-28 | 25 | 30% | 2.1d | 2003-02-26 | 2003-02-28 | 3d | 29.9d | 0d | 章鹏 | 24h | 7.2h |
| 27 | 1.1.25 | 物品动画改为两个 | 1.5d | 2003-03-28 | 2003-03-31 | 26 |  |  | 2003-03-17 | 2003-03-18 | 1.5d | 29.9d | 0d | 章鹏 | 12h |  |
| 28 | 1.1.26 | 人物状态显示调试 | 1d | 2003-03-31 | 2003-04-01 | 27 |  |  | 2003-03-18 | 2003-03-19 | 1d | 29.9d | 0d | 章鹏 | 8h |  |
| 29 | 1.1.27 | 任务系统的调试 | 1d | 2003-04-01 | 2003-04-02 | 28 |  |  | 2003-03-25 | 2003-03-26 | 1d | 29.9d | 0d | 章鹏 | 8h |  |
| 30 | 1.1.28 | 掉出装备与玩家的关联功能调试 | 1d | 2003-04-02 | 2003-04-03 | 29 |  |  | 2003-03-26 | 2003-03-27 | 1d | 29.9d | 0d | 章鹏 | 8h |  |
| 31 | 1.1.29 | 聊天模块的调试 | 2d | 2003-04-03 | 2003-04-07 | 30 |  |  | 2003-03-28 | 2003-04-01 | 2d | 29.9d |  | 章鹏 | 16h |  |
| 32 | 1.1.30 | 向策划指导脚本平台的使用。确定其它类型技能的设定 | 3d | 2003-02-17 A | 2003-02-19 A |  | 100% |  | 2003-02-17 | 2003-02-19 | 3d |  |  | 窦昊 | 24h | 24h |
| 33 | 1.1.31 | 数据库相关部分草案，和与小东工作的前期准备 | 2d | 2003-02-20 A | 2003-02-21 A | 32 | 100% |  | 2003-02-20 | 2003-02-21 | 2d |  |  | 窦昊 | 16h | 16h |
| 34 | 1.1.32 | 确定帐号管理，点卡管理、角色管理的整体结构 | 1d | 2003-02-24 A | 2003-02-24 A | 33 | 100% |  | 2003-02-24 | 2003-02-24 | 1d |  |  | 窦昊 | 8h | 8h |
| 35 | 1.1.33 | 完成二进制格式的角色数据库存储及读取，配合小东完成各项工作 | 10d | 2003-02-25 A | 2003-03-10 A | 34 | 100% |  | 2003-02-25 | 2003-03-10 | 10d |  |  | 窦昊 | 80h | 80h |
| 36 | 1.1.34 | 调试数据库各项目功能 | 5d | 2003-03-11 A | 2003-03-17 | 35 | 80% | 1d | 2003-03-11 | 2003-03-17 | 5d | 29.5d | 0d | 窦昊 | 40h | 32h |
| 37 | 1.1.35 | 脚本指令的完善 | 3d | 2003-03-18 A | 2003-03-20 | 33, 4, 36 | 80% | 0.6d | 2003-03-18 | 2003-03-20 | 3d | 30.5d | 0d | 窦昊 | 24h | 19.2h |
| 38 | 1.1.36 | 技能界面的整合与修改 | 2d | 2003-03-21 | 2003-03-24 | 37 |  |  | 2003-03-21 | 2003-03-24 | 2d | 29.5d | 0d | 窦昊 | 16h |  |
| 39 | 1.1.37 | 完成所有技能及配合策划设定 | 10d | 2003-03-25 A | 2003-04-07 | 38 | 10% | 9d | 2003-03-25 | 2003-04-07 | 10d | 29.5d |  | 窦昊 | 80h | 8h |
| 40 | 1.1.38 | 界面细节调整 | 1d | 2003-02-17 A | 2003-02-17 A |  | 100% |  | 2003-02-17 | 2003-02-17 | 1d |  |  | 吴越 | 8h | 8h |
| 41 | 1.1.39 | 物品道具等得影响绘制的状态的查询 | 1d | 2003-02-18 A | 2003-02-18 A | 40 | 100% |  | 2003-02-18 | 2003-02-18 | 1d |  |  | 吴越 | 8h | 8h |
| 42 | 1.1.40 | 登录界面顺序的掉换 | 1d | 2003-02-19 A | 2003-02-19 A | 41 | 100% |  | 2003-02-19 | 2003-02-19 | 1d |  |  | 吴越 | 8h | 8h |
| 43 | 1.1.41 | 自动登录界面 | 1d | 2003-02-20 A | 2003-02-20 A | 42 | 100% |  | 2003-02-20 | 2003-02-20 | 1d |  |  | 吴越 | 8h | 8h |
| 44 | 1.1.42 | 对话频道 | 0.5d | 2003-02-21 A | 2003-02-21 A | 43 | 100% |  | 2003-02-21 | 2003-02-21 | 0.5d |  |  | 吴越 | 4h | 4h |
| 45 | 1.1.43 | 组队界面 | 3d | 2003-02-21 A | 2003-02-26 A | 44 | 100% |  | 2003-02-21 | 2003-02-26 | 3d |  |  | 吴越 | 24h | 24h |
| 46 | 1.1.44 | 不带滚动条的选择界面 | 0.5d | 2003-02-26 A | 2003-02-26 A | 45 | 100% |  | 2003-02-26 | 2003-02-26 | 0.5d |  |  | 吴越 | 4h | 4h |
| 47 | 1.1.45 | 交易界面、交易过程中与其他操作界面的互斥 | 2d | 2003-02-27 A | 2003-02-28 A | 46 | 100% |  | 2003-02-27 | 2003-02-28 | 2d |  |  | 吴越 | 16h | 16h |
| 48 | 1.1.46 | 新建玩家界面修改成新的设定 | 1d | 2003-03-03 A | 2003-03-03 A | 47 | 100% |  | 2003-03-03 | 2003-03-03 | 1d |  |  | 吴越 | 8h | 8h |
| 49 | 1.1.47 | QQ聊天界面 | 9d | 2003-03-04 A | 2003-03-14 A | 48 | 100% |  | 2003-03-04 | 2003-03-14 | 9d |  |  | 吴越 | 72h | 72h |
| 50 | 1.1.48 | 地图场景模块排序的修改、错误修改 | 9d | 2003-03-17 A | 2003-03-27 | 49 | 95% | 0.45d | 2003-03-17 | 2003-03-27 | 9d | 21d | 0d | 吴越 | 72h | 68.4h |
| 51 | 1.1.49 | 系统消息 | 1d | 2003-03-28 | 2003-03-28 | 50 |  |  | 2003-03-28 | 2003-03-28 | 1d | 21d | 0d | 吴越 | 8h |  |
| 52 | 1.1.50 | 小地图界面 | 1d | 2003-03-31 | 2003-03-31 | 51 |  |  | 2003-03-31 | 2003-03-31 | 1d | 21d | 0d | 吴越 | 8h |  |
| 53 | 1.1.51 | 调试与修改 | 10d | 2003-04-01 | 2003-04-14 | 52 |  |  | 2003-04-01 | 2003-04-14 | 10d | 21d | 0d | 吴越 | 80h |  |
| 54 | 1.1.52 | 网络底层及单元测试工具 | 10d | 2003-02-17 A | 2003-02-28 A |  | 100% |  | 2003-02-17 | 2003-02-28 | 10d |  |  | 刘鹏 | 80h | 80h |
| 55 | 1.1.53 | 网络底层和游戏世界整合的中间层工作 | 10d | 2003-03-03 A | 2003-03-14 A | 54 | 100% |  | 2003-03-03 | 2003-03-14 | 10d |  |  | 刘鹏 | 80h | 80h |
| 56 | 1.1.54 | 网络底层在游戏世界中应用后的调试工作 | 7d | 2003-03-17 A | 2003-03-25 | 55 | 36% | 4.5d | 2003-03-17 | 2003-03-21 | 5d | 4.5d | 0d | 刘鹏 | 56h | 20h |
| 57 | 1.1.55 | 测试机器人 | 4d | 2003-03-26 | 2003-03-31 | 56 |  |  | 2003-03-26 | 2003-03-31 | 4d | 4.5d | 0d | 刘鹏 | 32h |  |

| ID | WBS | Task | Duration | Start | Finish | Predecessors | Complete | Remaining | Baseline start | Baseline finish | Baseline duration | Total slack | Free slack | Constraint | Resources | Work | Actual work |
| --- | --- | --- | --- | --- | --- | --- | --- | --- | --- | --- | --- | --- | --- | --- | --- | --- | --- |
| 58 | 1.2 | **Alpha3** | 51d? | 2003-03-03 A | 2003-05-12 |  | 16% | 42.6d? | 2003-03-03 | 2003-05-20 | 56.5d? | 4.5d |  |  |  | 1068h | 176h |
| 59 | 1.2.1 | 冗余图素的查找工具 | 7d | 2003-04-15 | 2003-04-24 | 17 |  |  | 2003-04-08 | 2003-04-17 | 7d | 15.5d |  |  | 俞江 | 56h |  |
| 60 | 1.2.2 | Alpha2版本的游戏世界调试除错 | 5d | 2003-04-01 | 2003-04-08 | 9 |  |  | 2003-04-01 | 2003-04-08 | 5d | 0d |  |  | 胡翌 | 40h |  |
| 61 | 1.2.3 | Alpha3前调试除错 | 13d | 2003-04-08 | 2003-04-25 | 60 |  |  | 2003-04-08 | 2003-04-25 | 13d | 0d |  |  | 胡翌 | 104h |  |
| 62 | 1.2.4 | 客户端进行补偿改善游戏的流畅度 | 15d | 2003-03-03 | 2003-03-21 | 22 |  |  | 2003-04-08 | 2003-04-29 | 15d | 25.5d | 0d |  | 章鹏 | 120h |  |
| 63 | 1.2.5 | GM系统 | 15d | 2003-03-24 | 2003-04-11 | 62 |  |  | 2003-04-29 | 2003-05-20 | 15d | 25.5d |  |  | 章鹏 | 120h |  |
| 64 | 1.2.6 | 减少容量的SPR抽方向工具 | 1d | 2003-04-15 | 2003-04-15 | 53 |  |  | 2003-04-15 | 2003-04-15 | 1d | 21d | 0d |  | 吴越 | 8h |  |
| 65 | 1.2.7 | 系统选项 | 2d | 2003-04-16 | 2003-04-17 | 64 |  |  | 2003-04-16 | 2003-04-17 | 2d | 21d | 0d |  | 吴越 | 16h |  |
| 66 | 1.2.8 | 片头动画 | 0.5d | 2003-04-18 | 2003-04-18 | 65 |  |  | 2003-04-18 | 2003-04-18 | 0.5d | 21d |  |  | 吴越 | 4h |  |
| 67 | 1.2.9 | 3D显示引擎框架设计 | 5d | 2003-03-03 A | 2003-03-07 A |  | 100% |  | 2003-03-03 | 2003-03-07 | 5d |  |  | start no earlier than 2003-03-03 | 陈鹏 | 40h | 40h |
| 68 | 1.2.10 | 完善3D显示引擎设计、开始编码 | 5d | 2003-03-10 A | 2003-03-14 A | 67 | 100% |  | 2003-03-10 | 2003-03-14 | 5d |  |  |  | 陈鹏 | 40h | 40h |
| 69 | 1.2.11 | 3D显示模块完成编码和测试 | 15d | 2003-03-17 A | 2003-04-04 | 68 | 80% | 3d | 2003-03-17 | 2003-04-04 | 15d | 10.5d | 0d |  | 陈鹏 | 120h | 96h |
| 70 | 1.2.12 | 开始完成光影计算 | 20d? | 2003-04-07 | 2003-05-02 | 69 |  |  | 2003-04-07 | 2003-05-02 | 20d? | 10.5d |  |  | 陈鹏 | 160h |  |
| 71 | 1.2.13 | 多服务器网关程序的整合 | 30d | 2003-04-01 | 2003-05-12 | 57 |  |  | 2003-03-24 | 2003-05-02 | 30d | 4.5d |  |  | 刘鹏 | 240h |  |
| 72 | 1.3 | **Close Belta** | 15d | 2003-04-25 | 2003-05-16 |  |  |  | 2003-04-25 | 2003-05-16 | 15d | 0d |  |  |  | 120h |  |
| 73 | 1.3.1 | Alpha3版本的游戏世界调试除错 | 15d | 2003-04-25 | 2003-05-16 | 61 |  |  | 2003-04-25 | 2003-05-16 | 15d | 0d |  |  | 胡翌 | 120h |  |
| 74 | 1.4 | **Close Belta之后的工作** | 1d? | 2003-05-16 | 2003-05-19 | 73 |  |  | 2003-05-16 | 2003-05-19 | 1d? | 0d |  |  |  |  |  |
| 75 | 1.4.1 | 黄金装备与套装 | 1d? | 2003-05-16 | 2003-05-19 |  |  |  | 2003-05-16 | 2003-05-19 | 1d? | 0d |  |  |  |  |  |
| 76 | 1.4.2 | 帮会系统 | 1d? | 2003-05-16 | 2003-05-19 |  |  |  | 2003-05-16 | 2003-05-19 | 1d? | 0d |  |  |  |  |  |
| 77 | 1.4.3 | 人物关系 | 1d? | 2003-05-16 | 2003-05-19 |  |  |  | 2003-05-16 | 2003-05-19 | 1d? | 0d |  |  |  |  |  |
| 78 | 1.4.4 | 生活技能 | 1d? | 2003-05-16 | 2003-05-19 |  |  |  | 2003-05-16 | 2003-05-19 | 1d? | 0d |  |  |  |  |  |
| 79 | 1.4.5 | 帮会系统界面 | 1d? | 2003-05-16 | 2003-05-19 |  |  |  | 2003-05-16 | 2003-05-19 | 1d? | 0d |  |  |  |  |  |
| 80 | 1.4.6 | 人物关系界面 | 1d? | 2003-05-16 | 2003-05-19 |  |  |  | 2003-05-16 | 2003-05-19 | 1d? | 0d |  |  |  |  |  |
| 81 | 1.4.7 | 生活技能界面 | 1d? | 2003-05-16 | 2003-05-19 |  |  |  | 2003-05-16 | 2003-05-19 | 1d? | 0d |  |  |  |  |  |
| 82 | 1.4.8 | 策划的其他要求 | 1d? | 2003-05-16 | 2003-05-19 |  |  |  | 2003-05-16 | 2003-05-19 | 1d? | 0d |  |  |  |  |  |
